# Linux-HA project

Schedule from Planner, 2005-01-15 to 2005-09-17.
Linux-HA

## Calendars

- Default: Mon-Fri 08:00-12:00, 13:00-17:00; Sat-Sun off.

## Resources

| Resource | Group |
| --- | --- |
| Lars Ellenberg | SUSE |
| Alan Robertson | IBM.US |
| Guochun Shi | NCSA |
| Sun, Jiang Dong | IBM.CN |
| Huang, Zhen | IBM.CN |
| Zhao, Kai | IBM.CN |
| Dave Blaschke | IBM.US |
| Lars Marowsky-Bree | SUSE |
| Andrew Beekhof | SUSE |

## Schedule

| ID | WBS | Task | Type | Duration | Start | Finish | Predecessors | Complete | Constraint | Resources | Work |
| --- | --- | --- | --- | --- | --- | --- | --- | --- | --- | --- | --- |
| 1 | 1 | **2.0.0 release** |  |  | 2005-01-15 | 2005-02-09 |  |  |  |  | 144h |
| 2 | 1.1 | 2.0.0 test preparation |  | 5d | 2005-01-15 | 2005-01-20 |  |  |  | Alan Robertson [80%] | 32h |
| 3 | 1.2 | 2.0.0 testing |  | 15d | 2005-01-20 | 2005-02-07 | 2, 28SS+10h |  |  | Alan Robertson [33%] | 40h |
| 4 | 1.3 | 2.0.0 release process |  |  | 2005-02-07 | 2005-02-09 | 3 |  |  | Alan Robertson | 16h |
| 5 | 1.4 | 2.0.0 release | milestone | 0d | 2005-02-09 | 2005-02-09 | 4 |  |  |  |  |
| 6 | 2 | **2.0.1 release** |  |  | 2005-02-09 | 2005-03-19 | 1FS+1h |  | start no earlier than 2005-02-22 |  | 216h |
| 7 | 2.1 | 2.0.1 receive feedback, fix bugs from 2.0.0 |  | 15d | 2005-02-09 | 2005-03-02 |  |  |  |  |  |
| 8 | 2.2 | 2.0.1 test preparation |  |  | 2005-03-02 | 2005-03-03 | 7 |  |  |  | 8h |
| 9 | 2.3 | 2.0.1 testing |  |  | 2005-03-03 | 2005-03-17 | 8 |  |  |  | 80h |
| 10 | 2.4 | 2.0.1 release process |  |  | 2005-03-17 | 2005-03-19 | 9 |  |  | Alan Robertson | 16h |
| 11 | 2.5 | 2.0.1 release | milestone | 0d | 2005-03-19 | 2005-03-19 | 10 |  |  |  |  |
| 12 | 3 | **2.0.2 release** |  |  | 2005-03-19 | 2005-05-12 | 6FS+1h |  | start no earlier than 2005-01-18 |  | 312h |
| 13 | 3.1 | 2.0.2 receive feedback, fix bugs from 2.0.1 |  | 20d | 2005-03-19 | 2005-04-15 |  |  |  |  |  |
| 14 | 3.2 | 2.0.2 test preparation |  |  | 2005-04-15 | 2005-04-19 | 13 |  |  |  | 16h |
| 15 | 3.3 | 2.0.2 testing |  | 15d | 2005-04-19 | 2005-05-10 | 14 |  |  |  | 40h |
| 16 | 3.4 | 2.0.2 release process |  | 2d | 2005-05-10 | 2005-05-12 | 15 |  |  | Alan Robertson | 16h |
| 17 | 3.5 | 2.0.2 release | milestone | 0d | 2005-05-12 | 2005-05-12 | 16 |  |  |  |  |
| 18 | 4 | Date 1 |  | 118d | 2005-01-15 | 2005-06-29 |  |  |  |  |  |
| 19 | 5 | **2.0.3 release** |  |  | 2005-05-12 | 2005-08-31 |  |  |  |  | 632h |
| 20 | 5.1 | 2.0.3 receive feedback, fix bugs from 2.0.2 |  | 60d | 2005-05-12 | 2005-08-04 | 12 |  |  |  |  |
| 21 | 5.2 | 2.0.3 test preparation |  |  | 2005-08-04 | 2005-08-08 | 20 |  |  |  | 16h |
| 22 | 5.3 | 2.0.3 testing |  |  | 2005-08-08 | 2005-08-29 | 21 |  |  |  | 120h |
| 23 | 5.4 | 2.0.3 release process |  |  | 2005-08-29 | 2005-08-31 | 22 |  |  |  | 16h |
| 24 | 5.5 | 2.0.3 release | milestone | 0d | 2005-08-31 | 2005-08-31 | 23 |  |  |  |  |
| 25 | 6 | Date 2 |  | 174d | 2005-01-15 | 2005-09-15 |  |  |  |  |  |
| 26 | 7 | 229.19: Community (RH) Cluster Integration |  |  | 2005-01-15 | 2005-02-25 |  |  |  |  | 240h |
| 27 | 8 | 229.20: project leadership, etc. |  | 208d | 2005-01-15 | 2005-09-17 |  | 100% |  | Alan Robertson [20%] | 332.8h |
| 28 | 9 | 229.23: revised STONITH API |  |  | 2005-01-15 | 2005-02-01 |  |  |  | Sun, Jiang Dong | 120h |
| 29 | 10 | 1039.14: CIM support |  |  | 2005-01-15 | 2005-02-04 |  |  |  |  | 120h |
| 30 | 11 | 1040.04: Internal IBM support |  |  | 2005-01-15 | 2005-02-11 |  |  |  |  | 160h |
| 31 | 12 | 1040.07: Ongoing advocacy |  |  | 2005-01-15 | 2005-02-11 |  |  |  |  | 160h |
| 32 | 13 | 1041.19: Make IPC library thread-safe |  |  | 2005-01-15 | 2005-02-04 |  |  |  |  | 120h |
| 33 | 14 | 1041.21: Make apphbd library thread-safe |  |  | 2005-01-15 | 2005-01-28 |  |  |  |  | 80h |
| 34 | 15 | 1041.22: Make hbclient library thread-safe |  |  | 2005-01-15 | 2005-01-28 |  |  |  |  | 80h |
| 35 | 16 | 1041.24: MontaVista integration work |  |  | 2005-01-15 | 2005-02-04 |  |  |  |  | 120h |
| 36 | 17 | 1041.27: HPI Stonith Support for BladeCenter |  |  | 2005-01-15 | 2005-01-28 |  |  |  |  | 80h |
| 37 | 18 | 1041.28: AIS performance improvements |  |  | 2005-01-15 | 2005-01-17 |  |  |  |  |  |
| 38 | 19 | 1042.10: Certification with IBM storage |  |  | 2005-01-15 | 2005-02-11 |  |  |  |  | 160h |
| 39 | 20 | 1044.09: Create new test cases |  |  | 2005-01-15 | 2005-02-11 |  |  |  |  | 160h |
| 40 | 21 | 1044.11: Create certification process |  |  | 2005-01-15 | 2005-02-04 |  |  |  |  | 120h |
| 41 | 22 | NUT STONITH plugin |  |  | 2005-01-15 | 2005-03-02 |  |  |  | Guochun Shi | 320h |
| 42 | 23 | CCM Maturation |  |  | 2005-01-15 | 2005-03-25 |  |  |  | Guochun Shi | 480h |
| 43 | 24 | Serial Link disconnect check |  |  | 2005-01-15 | 2005-02-07 |  |  |  | Guochun Shi | 160h |
| 44 | 25 | Total Ordered messaging |  |  | 2005-01-15 | 2005-03-02 |  |  |  | Guochun Shi | 320h |
| 45 | 26 | Resource Dependency Analysis |  |  | 2005-01-15 | 2005-01-17 |  |  |  |  |  |
| 46 | 27 | 1042.06: (DONE) DRBD/DB2 performance testing |  |  | 2005-01-15 | 2005-01-17 |  |  |  |  |  |
| 47 | 28 | 1041.23: ?Make SAF libraries thread-safe |  |  | 2005-01-15 | 2005-02-11 |  |  |  |  | 160h |
| 48 | 29 | 1040.06: !Move web site to new format |  |  | 2005-01-15 | 2005-01-28 |  |  |  |  | 80h |
| 49 | 30 | 1044.08: ?Merge two test tools |  |  | 2005-01-15 | 2005-01-28 |  |  |  |  | 80h |
| 50 | 31 | 229.21: ?Internationalization |  |  | 2005-01-15 | 2005-02-11 |  |  |  |  | 160h |
| 51 | 32 | 1041.25: ?TIPC Integration |  |  | 2005-01-15 | 2005-02-04 |  |  |  |  | 120h |
| 52 | 33 | 1044.09: ?Creation of new test cases |  |  | 2005-01-15 | 2005-02-11 |  |  |  |  | 160h |
| 53 | 34 | 1044.10: ?Fully automated nightly tests |  |  | 2005-01-15 | 2005-02-04 |  |  |  |  | 120h |

Notes:
- 27: Ongoing...
- 35: Tue 18 Jan 2005, 21:45 This item is now VERY important.
- 37: Tue 18 Jan 2005, 21:44 This item has now probably become work to improve OpenAIS. But, we hadn't allocated any staff to it :-).
- 42: Wed 19 Jan 2005, 15:39 heal split brain, separate info gathering from reporting
- 47: This is likely to translate into integration with OpenAIS, and contributing to it.
- 48: Tue 18 Jan 2005, 21:54 - Some community resources have been identified who will do this.
- 50: Tue 18 Jan 2005, 21:39: / Probably won't get done. / The customer we were doing this for/with has backed out.
- 51: Tue 18 Jan 2005, 21:42 This may no longer make much sense, since we probably won't be doing major heartbeat-communication-based work.
